# NAJD-S2

Schedule from Primavera P6, 2025-09-07 to 2026-09-01, data date 2025-08-15, costs in SAR, A marks actual dates.
Must finish by 2026-09-01

## Calendars

- NAJD Site — Sun-Thu 8h (KSA): Mon-Thu 07:00-15:00; Fri-Sat off; Sun 07:00-15:00. Exceptions (off unless hours are given): 2025-09-23, 2026-03-18 07:00-11:00, 2026-03-19, 2026-03-22 to 2026-03-23.
- NAJD Office — Sun-Thu 8h: Mon-Thu 08:00-16:00; Fri-Sat off; Sun 08:00-16:00.

## Resources

| Resource | Group |
| --- | --- |
| Earthworks Crew | labor |
| 30t Excavator Fleet | equipment |
| Pipe 48in CS API 5L | material |
| QA/QC Engineers | labor |
| Sideboom Spread | equipment |
| Welding & NDT Crew | labor |
| HDD Maxi Rig | equipment |

## Schedule

| ID | Activity | Type | Duration | Start | Finish | Predecessors | Complete | Remaining | Planned start | Planned finish | Total float | Constraint | Calendar | Resources | Cost | Actual cost | AREA | PHASE |
| --- | --- | --- | --- | --- | --- | --- | --- | --- | --- | --- | --- | --- | --- | --- | --- | --- | --- | --- |
| A-000 | Notice to Proceed | milestone | 0d | 2025-09-07 A | 2025-09-07 A |  | 100% |  |  |  |  |  |  |  |  |  | SW | CON |
| A-010 | Mobilization & Temporary Works |  | 0d | 2025-09-07 A | 2025-10-05 A | A-000 | 100% |  |  |  |  |  |  | Earthworks Crew [160 h] | 1,500,000 | 1,590,000 | SW | CON |
| A-020 | Site Facilities & Access Roads |  | 0d | 2025-10-06 A | 2025-11-16 A | A-010 | 100% |  |  |  |  |  |  | 30t Excavator Fleet [240 h] | 1,200,000 | 1,272,000 | SW | CON |
| M-100 | Section 2 Mechanical Completion | milestone | 0d | 2026-08-30 | 2026-08-30 | T-030, C-030 |  |  |  |  | -3d | mandatory finish 2026-09-01 |  |  |  |  | SW | TST |
| M-110 | Handover to Operations | milestone | 0d | 2026-08-30 | 2026-08-30 | M-100 FS+10d |  |  |  |  | -3d |  |  |  |  |  | SW | TST |
| P-010 | Pipe Mill Order & Manufacture |  | 0d | 2025-09-07 A | 2026-02-08 A | A-000 | 100% |  |  |  |  |  | NAJD Office — Sun-Thu 8h | Pipe 48in CS API 5L | 2,000,000 | 2,120,000 | SW | EP |
| P-020 | Pipe Delivery Lot 1 — Segments A and B |  | 0d | 2026-01-12 A | 2026-02-01 A | P-010 FF+10d | 100% |  |  |  |  |  | NAJD Office — Sun-Thu 8h | Pipe 48in CS API 5L | 800,000 | 848,000 | SW | EP |
| P-030 | Pipe Delivery Lot 2 — Segments C and D |  | 0d | 2026-04-29 | 2026-05-19 | P-010 |  |  |  |  | 17d |  | NAJD Office — Sun-Thu 8h | Pipe 48in CS API 5L | 800,000 |  | SW | EP |
| P-040 | Valves & Fittings Procurement |  | 0d | 2026-06-10 | 2026-07-07 | P-010 |  |  |  |  | 60d |  | NAJD Office — Sun-Thu 8h | QA/QC Engineers | 600,000 |  | SW | EP |
| S31-010 | Survey & Set-out KP512+000 to KP518+000 |  | 0d | 2025-10-06 A | 2025-10-12 A | A-020 | 100% |  |  |  |  |  |  | QA/QC Engineers [40 h] | 120,000 | 127,200 | N | CON |
| S31-020 | ROW Clearing & Grading KP512+000 to KP518+000 |  | 0d | 2025-10-13 A | 2025-10-28 A | S31-010 | 100% |  |  |  |  |  |  | Earthworks Crew [96 h]; 30t Excavator Fleet [96 h] | 450,000 | 477,000 | N | CON |
| S31-030 | Trench Excavation KP512+000 to KP518+000 |  | 0d | 2025-10-29 A | 2025-12-02 A | S31-020 | 100% |  |  |  |  |  |  | Earthworks Crew [200 h]; 30t Excavator Fleet [200 h] | 1,400,000 | 1,484,000 | N | CON |
| S31-040 | Pipe Stringing KP512+000 to KP518+000 |  | 0d | 2025-11-05 A | 2025-11-18 A | S31-030 SS+5d, P-020 | 100% |  |  |  |  |  |  | Sideboom Spread [80 h]; Pipe 48in CS API 5L [6000] | 3,800,000 | 4,028,000 | N | CON |
| S31-050 | Welding & NDT KP512+000 to KP518+000 |  | 0d | 2025-11-19 A | 2025-12-30 A | S31-040 | 100% |  |  |  |  |  |  | Welding & NDT Crew [240 h] | 1,800,000 | 1,908,000 | N | CON |
| S31-060 | Lower-in & Backfill KP512+000 to KP518+000 |  | 0d | 2025-12-31 A | 2026-01-25 A | S31-050 | 100% |  |  |  |  |  |  | Sideboom Spread [144 h]; Earthworks Crew [144 h] | 900,000 | 954,000 | N | CON |
| S31-070 | Reinstatement KP512+000 to KP518+000 |  | 0d | 2026-01-26 A | 2026-02-08 A | S31-060 | 100% |  |  |  |  |  |  | Earthworks Crew [80 h] | 400,000 | 424,000 | N | CON |
| S32-010 | Survey & Set-out KP518+000 to KP524+000 |  | 0d | 2025-12-07 A | 2025-12-11 A | S31-020 | 100% |  |  |  |  |  |  | QA/QC Engineers [40 h] | 120,000 | 127,200 | N | CON |
| S32-020 | ROW Clearing & Grading KP518+000 to KP524+000 |  | 0d | 2025-12-14 A | 2025-12-29 A | S32-010 | 100% |  |  |  |  |  |  | Earthworks Crew [96 h]; 30t Excavator Fleet [96 h] | 450,000 | 477,000 | N | CON |
| S32-030 | Trench Excavation KP518+000 to KP524+000 |  | 0d | 2025-12-30 A | 2026-02-02 A | S32-020 | 100% |  |  |  |  |  |  | Earthworks Crew [200 h]; 30t Excavator Fleet [200 h] | 1,400,000 | 1,484,000 | N | CON |
| S32-040 | Pipe Stringing KP518+000 to KP524+000 |  | 0d | 2026-01-06 A | 2026-01-19 A | S32-030 SS+5d | 100% |  |  |  |  |  |  | Sideboom Spread [80 h]; Pipe 48in CS API 5L [6000] | 3,800,000 | 4,028,000 | N | CON |
| S32-050 | Welding & NDT KP518+000 to KP524+000 |  | 0d | 2026-01-20 A | 2026-03-02 A | S32-040 | 100% |  |  |  |  |  |  | Welding & NDT Crew [240 h] | 1,800,000 | 1,908,000 | N | CON |
| S32-060 | Lower-in & Backfill KP518+000 to KP524+000 |  | 0d | 2026-03-03 A | 2026-03-31 A | S32-050 | 100% |  |  |  |  |  |  | Sideboom Spread [144 h]; Earthworks Crew [144 h] | 900,000 | 954,000 | N | CON |
| S32-070 | Reinstatement KP518+000 to KP524+000 |  | 0d | 2026-04-01 A | 2026-04-14 A | S32-060 | 100% |  |  |  |  |  |  | Earthworks Crew [80 h] | 400,000 | 424,000 | N | CON |
| S33-010 | Survey & Set-out KP524+000 to KP530+000 |  | 0d | 2026-02-04 A | 2026-02-10 A | S32-020 | 100% |  |  |  |  |  |  | QA/QC Engineers [40 h] | 120,000 | 127,200 | S | CON |
| S33-020 | ROW Clearing & Grading KP524+000 to KP530+000 |  | 0d | 2026-02-11 A | 2026-02-26 A | S33-010 | 100% |  |  |  |  |  |  | Earthworks Crew [96 h]; 30t Excavator Fleet [96 h] | 450,000 | 477,000 | S | CON |
| S33-030 | Trench Excavation KP524+000 to KP530+000 |  | 0d | 2026-03-01 A | 2026-04-07 A | S33-020 | 100% |  |  |  |  |  |  | Earthworks Crew [200 h]; 30t Excavator Fleet [200 h] | 1,400,000 | 1,484,000 | S | CON |
| S33-040 | Pipe Stringing KP524+000 to KP530+000 |  | 0d | 2026-03-08 A | 2026-03-24 A | S33-030 SS+5d | 100% |  |  |  |  |  |  | Sideboom Spread [80 h]; Pipe 48in CS API 5L [6000] | 3,800,000 | 4,028,000 | S | CON |
| S33-050 | Welding & NDT KP524+000 to KP530+000 |  | 0d | 2026-04-01 A | 2026-05-05 | S33-040 | 49% | 15.25d | 2026-03-25 | 2026-05-05 | 3d |  |  | Welding & NDT Crew [240 h] | 1,800,000 | 888,174 | S | CON |
| S33-060 | Lower-in & Backfill KP524+000 to KP530+000 |  | 0d | 2026-05-06 | 2026-05-31 | S33-050 |  |  |  |  | 3d |  |  | Sideboom Spread [144 h]; Earthworks Crew [144 h] | 900,000 |  | S | CON |
| S33-070 | Reinstatement KP524+000 to KP530+000 |  | 0d | 2026-06-01 | 2026-06-14 | S33-060 |  |  |  |  | 7d |  |  | Earthworks Crew [80 h] | 400,000 |  | S | CON |
| S34-010 | Survey & Set-out KP530+000 to KP536+000 |  | 0d | 2026-04-12 A | 2026-04-16 A | S33-020 | 100% |  |  |  |  |  |  | QA/QC Engineers [40 h] | 120,000 | 127,200 | S | CON |
| S34-020 | ROW Clearing & Grading KP530+000 to KP536+000 |  | 0d | 2026-04-26 A | 2026-05-04 | S34-010 | 23% | 9.25d | 2026-04-19 | 2026-05-04 | 0d |  |  | Earthworks Crew [96 h]; 30t Excavator Fleet [96 h] | 450,000 | 105,735 | S | CON |
| S34-030 | Trench Excavation KP530+000 to KP536+000 |  | 0d | 2026-05-05 | 2026-06-08 | S34-020 |  |  |  |  | 0d |  |  | Earthworks Crew [200 h]; 30t Excavator Fleet [200 h] | 1,400,000 |  | S | CON |
| S34-040 | Pipe Stringing KP530+000 to KP536+000 |  | 0d | 2026-05-12 | 2026-05-25 | S34-030 SS+5d, P-030 |  |  |  |  | 0d |  |  | Sideboom Spread [80 h]; Pipe 48in CS API 5L [6000] | 3,800,000 |  | S | CON |
| S34-050 | Welding & NDT KP530+000 to KP536+000 |  | 0d | 2026-05-26 | 2026-07-28 | S34-040 |  |  |  |  | 0d |  |  | Welding & NDT Crew [368 h] | 1,800,000 |  | S | CON |
| S34-060 | Lower-in & Backfill KP530+000 to KP536+000 |  | 0d | 2026-07-07 | 2026-07-30 | S34-050 |  |  |  |  | 0d |  |  | Sideboom Spread [144 h]; Earthworks Crew [144 h] | 900,000 |  | S | CON |
| S34-070 | Reinstatement KP530+000 to KP536+000 |  | 0d | 2026-08-02 | 2026-08-13 | S34-060 |  |  |  |  | 0d |  |  | Earthworks Crew [80 h] | 400,000 |  | S | CON |
| C-010 | Wadi Hanifa HDD Crossing KP529+800 |  | 0d | 2026-03-30 A | 2026-05-10 | S33-030 FS-5d | 46% | 18.88d | 2026-03-18 | 2026-05-10 | 5d |  |  | HDD Maxi Rig [280 h] | 2,500,000 | 1,158,050 | X | CON |
| C-020 | Pump Station 2 Tie-in KP536+000 |  | 0d | 2026-08-18 | 2026-08-31 | S34-070 |  |  |  |  | 5d | finish on 2026-09-02 |  | Welding & NDT Crew [80 h] | 700,000 |  | X | CON |
| C-030 | Cathodic Protection System — Section 2 Mainline |  | 0d | 2026-07-29 | 2026-09-01 |  |  |  |  |  | 15d |  |  | QA/QC Engineers [200 h] | 900,000 |  | X | CON |
| T-010 | Hydrostatic Test — Section 2 Mainline |  | 0d | 2026-07-21 | 2026-08-10 | S34-060, S33-070, S31-070, S32-070, C-010, P-040 |  |  |  |  | -3d |  |  | QA/QC Engineers [120 h] | 500,000 |  | SW | TST |
| T-020 | Golden Weld Tie-in KP518+400 |  | 0d | 2026-08-12 | 2026-08-18 | S33-050 |  |  |  |  | 10d |  |  | Welding & NDT Crew [40 h] | 300,000 |  | SW | TST |
| T-030 | Pre-commissioning & Dewatering |  | 0d | 2026-08-12 | 2026-08-27 | T-010, T-020 |  |  |  |  | -3d |  |  | QA/QC Engineers [96 h] | 400,000 |  | SW | TST |

## Activity codes

| Code | Value | Meaning |
| --- | --- | --- |
| AREA | N | North Spread |
| AREA | S | South Spread |
| AREA | SW | Site-wide |
| AREA | X | Crossings |
| PHASE | CON | Construction |
| PHASE | EP | Engineering & Procurement |
| PHASE | TST | Testing & Handover |
